# 会员刷卡积分管理系统_项目进度计划

How a schedule from MS Project changed from version to version. A marks actual dates.

## Version 1 (data date 2018-08-22, saved 2018-08-21)

Note of the change: 增加甘特图

| ID | WBS | Task | Duration | Start | Finish | Predecessors | Complete | Total float |
| --- | --- | --- | --- | --- | --- | --- | --- | --- |
| 1 | 1 | **会员刷卡积分管理系统** | 24d | 2018-07-19 A | 2018-08-21 |  | 33% | 0d |
| 2 | 1.1 | **1 先启阶段** | 7d | 2018-07-19 A | 2018-07-27 A |  | 100% |  |
| 3 | 1.1.1 | **1.1 项目管理** | 2d | 2018-07-19 A | 2018-07-20 A |  | 100% |  |
| 4 |  | 1.1.1 立项 | 1d | 2018-07-19 A | 2018-07-19 A |  | 100% |  |
| 5 |  | 1.1.2 制定项目计划 | 1d | 2018-07-20 A | 2018-07-20 A | 4 | 100% |  |
| 6 |  | 1.1.3 同行评审 | 1d | 2018-07-20 A | 2018-07-20 A | 4, 5 | 100% |  |
| 7 | 1.1.2 | **1.2 配置管理** | 2d | 2018-07-19 A | 2018-07-20 A |  | 100% |  |
| 8 |  | 1.2.1 制定配置计划 | 0.17d | 2018-07-19 A | 2018-07-19 A |  | 100% |  |
| 9 |  | 1.2.2 搭建配置环境 | 1d | 2018-07-20 A | 2018-07-20 A |  | 100% |  |
| 10 | 1.1.3 | **1.3 需求开发** | 3d | 2018-07-23 A | 2018-07-25 A |  | 100% |  |
| 11 |  | 1.3.1 用例建模 | 1d | 2018-07-23 A | 2018-07-23 A | 5 | 100% |  |
| 12 |  | 1.3.2 用例阐述 | 2d | 2018-07-24 A | 2018-07-25 A | 11 | 100% |  |
| 13 | 1.1.4 | **1.4 测试计划** | 2d | 2018-07-24 A | 2018-07-25 A |  | 100% |  |
| 14 |  | 1.4.1 制定测试计划 | 1d | 2018-07-24 A | 2018-07-24 A | 11 | 100% |  |
| 15 |  | 1.4.2 系统测试用例设计 | 1d | 2018-07-25 A | 2018-07-25 A | 14 | 100% |  |
| 16 | 1.1.5 | **1.5 阶段评审** | 2d | 2018-07-26 A | 2018-07-27 A |  | 100% |  |
| 17 |  | 1.5.1 先启配置状态审计 | 1d | 2018-07-26 A | 2018-07-26 A | 15 | 100% |  |
| 18 |  | 1.5.2 评审需求工件 | 1d | 2018-07-26 A | 2018-07-26 A | 15 | 100% |  |
| 19 |  | 1.5.3 发布需求基线 | 1d | 2018-07-27 A | 2018-07-27 A | 17, 18 | 100% |  |
| 20 | 1.2 | **2 精化阶段** | 5d | 2018-07-30 | 2018-08-03 |  |  | 0d |
| 21 |  | 2.1 设计界面原型 | 1d | 2018-07-30 | 2018-07-30 | 19 |  |  |
| 22 | 1.2.2 | **2.2 OOAD** | 1d | 2018-08-01 | 2018-08-01 |  |  | 0d |
| 23 |  | 2.2.1 分析模型 | 0.5d | 2018-08-01 | 2018-08-01 | 11 |  |  |
| 24 |  | 2.2.2 设计模型 | 0.5d | 2018-08-01 | 2018-08-01 | 23 |  |  |
| 25 |  | 2.3 数据建模与数据库设计 | 1d | 2018-08-02 | 2018-08-02 | 24 |  |  |
| 26 |  | 2.4 集成测试用例设计 | 0.5d | 2018-08-03 | 2018-08-03 | 25 |  |  |
| 27 | 1.2.5 | **2.5 阶段评审** | 1d | 2018-08-03 | 2018-08-03 | 26 |  |  |
| 28 |  | 2.5.1 精化配置状态审计 | 1d | 2018-08-03 | 2018-08-03 |  |  |  |
| 29 |  | 2.5.2 评审设计工件 | 1d | 2018-08-03 | 2018-08-03 |  |  |  |
| 30 |  | 2.5.3 发布设计基线 | 1d | 2018-08-03 | 2018-08-03 |  |  |  |
| 31 | 1.3 | **3 构建阶段** | 10d | 2018-08-06 | 2018-08-17 |  |  | 0d |
| 32 |  | 3.1 单元编码 | 7d | 2018-08-06 | 2018-08-14 | 27 |  |  |
| 33 |  | 3.2 集成测试 | 1d | 2018-08-15 | 2018-08-15 | 32 |  |  |
| 34 |  | 3.3 系统测试 | 0.5d | 2018-08-16 | 2018-08-16 | 33 |  |  |
| 35 | 1.3.4 | **3.4 阶段评审** | 1d | 2018-08-17 | 2018-08-17 | 34 |  |  |
| 36 |  | 3.4.1 构建配置状态审计 | 1d | 2018-08-17 | 2018-08-17 |  |  |  |
| 37 |  | 3.4.2 评审构建工件 | 1d | 2018-08-17 | 2018-08-17 |  |  |  |
| 38 |  | 3.4.3 发布构建基线 | 1d | 2018-08-17 | 2018-08-17 |  |  |  |
| 39 | 1.4 | **4 产品化阶段** | 2d | 2018-08-20 | 2018-08-21 |  |  |  |
| 40 | 1.4.1 | **4.1 产品发布** | 1d | 2018-08-20 | 2018-08-20 | 35 |  |  |
| 41 |  | 4.1.1 编写产品说明书 | 1d | 2018-08-20 | 2018-08-20 |  |  |  |
| 42 | 1.4.2 | **4.2产品部署** | 1d | 2018-08-20 | 2018-08-20 | 41 |  |  |
| 43 |  | 4.2.1 搭建环境 | 1d | 2018-08-20 | 2018-08-20 |  |  |  |
| 44 |  | 4.2.2 运行产品 | 1d | 2018-08-20 | 2018-08-20 |  |  |  |
| 45 |  | 4.3 产品测试 | 1d | 2018-08-21 | 2018-08-21 | 44 |  |  |
| 46 | 1.4.4 | **4.4 阶段评审暨结项** | 1d | 2018-08-21 | 2018-08-21 | 45 |  |  |
| 47 |  | 4.4.1 配置状态审计 | 1d | 2018-08-21 | 2018-08-21 |  |  |  |
| 48 |  | 4.4.2 评审产品 | 1d | 2018-08-21 | 2018-08-21 |  |  |  |
| 49 |  | 4.4.3 结项 | 1d | 2018-08-21 | 2018-08-21 |  |  |  |

## Version 2 (data date 2018-08-22, saved 2018-08-22)

Note of the change: 甘特图

Last finish stays 2018-08-21. Complete tasks 12 → 33.

Changed:

| ID | Task | Start | Finish | Duration | Complete | Total float | Other |
| --- | --- | --- | --- | --- | --- | --- | --- |
| 1 | **会员刷卡积分管理系统** |  | 2018-08-21 A |  | 33% → 100% | 0d → none |  |
| 20 | **2 精化阶段** | 2018-07-30 A | 2018-08-03 A |  | 0% → 100% | 0d → none |  |
| 21 | 2.1 设计界面原型 | 2018-07-30 A | 2018-07-30 A |  | 0% → 100% |  |  |
| 22 | **2.2 OOAD** | 2018-08-01 A | 2018-08-01 A |  | 0% → 100% | 0d → none |  |
| 23 | 2.2.1 分析模型 | 2018-08-01 A | 2018-08-01 A |  | 0% → 100% |  |  |
| 24 | 2.2.2 设计模型 | 2018-08-01 A | 2018-08-01 A |  | 0% → 100% |  |  |
| 25 | 2.3 数据建模与数据库设计 | 2018-08-02 A | 2018-08-02 A |  | 0% → 100% |  |  |
| 26 | 2.4 集成测试用例设计 | 2018-08-03 A | 2018-08-03 A |  | 0% → 100% |  |  |
| 27 | **2.5 阶段评审** | 2018-08-03 A | 2018-08-03 A |  | 0% → 100% |  |  |
| 28 | 2.5.1 精化配置状态审计 | 2018-08-03 A | 2018-08-03 A |  | 0% → 100% |  |  |
| 29 | 2.5.2 评审设计工件 | 2018-08-03 A | 2018-08-03 A |  | 0% → 100% |  |  |
| 30 | 2.5.3 发布设计基线 | 2018-08-03 A | 2018-08-03 A |  | 0% → 100% |  |  |
| 31 | **3 构建阶段** | 2018-08-06 → 2018-07-23 A (-14d) | 2018-08-17 A | 10d → 20d | 0% → 100% | 0d → none | baseline start 2018-08-06 → 2018-07-23 |
| 32 | 3.1 单元编码 | 2018-08-06 A | 2018-08-14 A |  | 0% → 100% |  |  |
| 33 | 3.2 集成测试 | 2018-08-15 A | 2018-08-15 A |  | 0% → 100% |  |  |
| 34 | 3.3 系统测试 | 2018-08-16 A | 2018-08-16 A |  | 0% → 100% |  |  |
| 35 | **3.4 阶段评审** |  | 2018-08-17 A |  | 0% → 100% |  |  |
| 36 | 3.4.1 构建配置状态审计 | 2018-08-17 A | 2018-08-17 A |  | 0% → 100% |  |  |
| 37 | 3.4.2 评审构建工件 | 2018-08-17 → 2018-07-23 A (-25d) | 2018-08-17 → 2018-07-26 A (-22d) | 1d → 4d | 0% → 100% |  | baseline start 2018-08-17 → 2018-07-23; baseline finish 2018-08-17 → 2018-07-26 |
| 38 | 3.4.3 发布构建基线 | 2018-08-17 A | 2018-08-17 A |  | 0% → 100% |  |  |
| 39 | **4 产品化阶段** | 2018-08-20 A | 2018-08-21 A |  | 0% → 100% |  |  |
| 40 | **4.1 产品发布** | 2018-08-20 A | 2018-08-20 A |  | 0% → 100% |  |  |
| 41 | 4.1.1 编写产品说明书 | 2018-08-20 A | 2018-08-20 A |  | 0% → 100% |  |  |
| 42 | **4.2产品部署** | 2018-08-20 A | 2018-08-20 A |  | 0% → 100% |  |  |
| 43 | 4.2.1 搭建环境 | 2018-08-20 A | 2018-08-20 A |  | 0% → 100% |  |  |
| 44 | 4.2.2 运行产品 | 2018-08-20 A | 2018-08-20 A |  | 0% → 100% |  |  |
| 45 | 4.3 产品测试 | 2018-08-21 A | 2018-08-21 A |  | 0% → 100% |  |  |
| 46 | **4.4 阶段评审暨结项** | 2018-08-21 A | 2018-08-21 A |  | 0% → 100% |  |  |
| 47 | 4.4.1 配置状态审计 | 2018-08-21 A | 2018-08-21 A |  | 0% → 100% |  |  |
| 48 | 4.4.2 评审产品 | 2018-08-21 A | 2018-08-21 A |  | 0% → 100% |  |  |
| 49 | 4.4.3 结项 | 2018-08-21 A | 2018-08-21 A |  | 0% → 100% |  |  |
