# 项目进度计划

How a schedule from MS Project changed from version to version. A marks actual dates.

## Version 1 (saved 2018-07-04)

Note of the change: 项目进度计划（先启）

| ID | WBS | Task | Duration | Start | Finish | Predecessors | Total float | Constraint |
| --- | --- | --- | --- | --- | --- | --- | --- | --- |
| 1 | 1 | **会员刷卡积分管理系统** | 46d | 2018-07-01 | 2018-08-31 |  |  |  |
| 2 | 1.1 | **1.先启阶段** | 7d | 2018-07-01 | 2018-07-09 |  |  |  |
| 3 | 1.1.1 | **1.1 项目管理** | 6d | 2018-07-01 | 2018-07-06 |  |  |  |
| 4 |  | 1.1.1 立项 | 1d | 2018-07-01 | 2018-07-01 |  | 4d |  |
| 5 |  | 1.1.2 制定项目计划 | 1d | 2018-07-02 | 2018-07-02 | 4 | 4d |  |
| 6 |  | 1.1.3 同行评测 | 1d | 2018-07-06 | 2018-07-06 |  | 40d | start no earlier than 2018-07-06 |
| 7 | 1.1.2 | **1.2 配置管理** | 2d | 2018-07-01 | 2018-07-02 |  |  |  |
| 8 |  | 1.2.1 制定配置计划 | 1d | 2018-07-01 | 2018-07-01 |  | 0d |  |
| 9 |  | 1.2.2 搭建配置环境 | 1d | 2018-07-02 | 2018-07-02 | 8 | 0d |  |
| 10 | 1.1.3 | **1.3 需求开发** | 3d | 2018-07-04 | 2018-07-06 |  |  |  |
| 11 |  | 1.3.1 用例建模 | 1d | 2018-07-04 | 2018-07-04 |  | 40d | start no earlier than 2018-07-04 |
| 12 |  | 1.3.2 用例阐述 | 2d | 2018-07-05 | 2018-07-06 | 11 | 40d | finish no earlier than 2018-07-05 |
| 13 | 1.1.4 | **1.4 阶段评审** | 1d | 2018-07-06 | 2018-07-06 |  |  |  |
| 14 |  | 1.4.1 先启配置状态审计 | 1d | 2018-07-06 | 2018-07-06 |  | 40d | start no earlier than 2018-07-06 |
| 15 |  | 1.4.2 评审需求工件 | 1d | 2018-07-06 | 2018-07-06 |  | 0d |  |

## Version 2 (saved 2018-07-05)

Note of the change: 更新的项目进度计划

Last finish stays 2018-08-31.

Changed:

| ID | Task | Start | Finish | Other |
| --- | --- | --- | --- | --- |
| 7 | **1.2 配置管理** | 2018-07-01 → 2018-07-02 (+1d) | 2018-07-02 → 2018-07-03 (+1d) | baseline start 2018-07-01 → 2018-07-02; baseline finish 2018-07-02 → 2018-07-03 |
| 8 | 1.2.1 制定配置计划 | 2018-07-01 → 2018-07-02 (+1d) | 2018-07-01 → 2018-07-02 (+1d) | baseline start 2018-07-01 → 2018-07-02; baseline finish 2018-07-01 → 2018-07-02 |
| 9 | 1.2.2 搭建配置环境 | 2018-07-02 → 2018-07-03 (+1d) | 2018-07-02 → 2018-07-03 (+1d) | baseline start 2018-07-02 → 2018-07-03; baseline finish 2018-07-02 → 2018-07-03 |

## Version 3 (saved 2018-07-05)

Note of the change: Merge remote-tracking branch 'origin/master'

Last finish stays 2018-08-31.

Added:

| ID | Task | Duration | Start | Finish | Constraint | Resources |
| --- | --- | --- | --- | --- | --- | --- |
| 5 | 1.1.2 制定项目开发计划 | 0.25d | 2018-07-02 | 2018-07-02 | finish no earlier than 2018-07-02 | 伍锦彬 |

Changed:

| ID | Task | Total float | Other |
| --- | --- | --- | --- |
| 6 | 1.1.3 制定项目进度计划 | 4d → 44d | was named 1.1.2 制定项目计划 |
| 7 | 1.1.4 同行评测 |  | was named 1.1.3 同行评测 |

## Version 4 (data date 2018-07-19, saved 2018-07-19)

Note of the change: 修改后的项目进度计划

Last finish stays 2018-08-31. Complete tasks 0 → 11.

Added:

| ID | Task | Duration | Start | Finish | Resources |
| --- | --- | --- | --- | --- | --- |
| 17 | 1.4.3 发布开发基线 | 0.1d | 2018-07-06 A | 2018-07-06 A | 徐兆科 |
| 18 | **2 精化阶段** | 5d | 2018-07-09 A | 2018-07-12 |  |
| 19 | 2.1 设计界面原型 | 1d | 2018-07-09 | 2018-07-09 | 黄鑫辉 |
| 20 | **2.2 OOAD** | 4d | 2018-07-10 A | 2018-07-12 |  |
| 21 | 2.2.1 分析模型 | 2d | 2018-07-10 A | 2018-07-11 | 马晓鹏; 黄鑫辉 |
| 22 | 2.2.2 设计模型 | 1d | 2018-07-12 A | 2018-07-12 A | 马晓鹏; 黄鑫辉 |
| 23 | 2.3 数据库建模与数据库设计 | 2d | 2018-07-10 A | 2018-07-11 A | 徐兆科; 伍锦彬 |
| 24 | **2.4 评审阶段** | 1d | 2018-07-12 A | 2018-07-12 |  |
| 25 | 2.4.1 精化配置状态审核 | 1d | 2018-07-12 | 2018-07-12 |  |
| 26 | 2.4.2 评审设计工件 | 1d | 2018-07-12 | 2018-07-12 |  |
| 27 | 2.4.3 发布设计基线 | 0.1d | 2018-07-12 A | 2018-07-12 | 徐兆科 |
| 28 | **3 构建阶段** | 5d | 2018-07-13 A | 2018-07-18 |  |
| 29 | 3.1 单元编码 | 2d | 2018-07-13 A | 2018-07-16 | 伍锦彬; 徐兆科; 黄鑫辉; 马晓鹏 |
| 30 | 3.2 系统集成 | 1d | 2018-07-17 | 2018-07-17 | 马晓鹏 |
| 31 | 3.3 集成测试 | 1d | 2018-07-18 | 2018-07-18 | 徐兆科 |
| 32 | **3.4 评审阶段** | 1d | 2018-07-18 | 2018-07-18 |  |
| 33 | 3.4.1 构建配置状态审计 | 0.5d | 2018-07-18 | 2018-07-18 |  |
| 34 | 3.4.2 评审构建工件 | 0.4d | 2018-07-18 | 2018-07-18 |  |
| 35 | 3.4.3 发布构建基线 | 0.1d | 2018-07-18 | 2018-07-18 | 徐兆科 |
| 36 | **4 产品化阶段** | 0.5d | 2018-07-19 | 2018-07-19 |  |
| 37 | **4.1 产品部署** | 0.5d | 2018-07-19 | 2018-07-19 |  |
| 38 | 4.1.1 搭建环境 | 0.1d | 2018-07-19 | 2018-07-19 | 马晓鹏 |
| 39 | 4.1.2 运行产品 | 0.1d | 2018-07-19 | 2018-07-19 | 马晓鹏 |
| 40 | 4.2 产品测试 | 0.3d | 2018-07-19 | 2018-07-19 | 徐兆科 |
| 41 | **4.3 评审阶段暨结项** | 0.4d | 2018-07-19 | 2018-07-19 |  |
| 42 | 4.3.1 配置状态审计 | 1.33d? | 2018-07-19 | 2018-07-19 |  |
| 43 | 4.3.2 评审产品 | 1.33d? | 2018-07-19 | 2018-07-19 |  |
| 44 | 4.3.3 结项 | 1.33d? | 2018-07-19 | 2018-07-19 |  |

Changed:

| ID | Task | Start | Finish | Duration | Complete | Total float | Other |
| --- | --- | --- | --- | --- | --- | --- | --- |
| 1 | **会员刷卡积分管理系统** | 2018-07-01 A |  | 46d → 61.33d | 0% → 46% |  |  |
| 2 | **1.先启阶段** | 2018-07-01 A | 2018-07-09 → 2018-07-06 (-3d) |  | 0% → 82% |  | baseline start none → 2018-07-01; baseline finish none → 2018-07-06 |
| 3 | **1.1 项目管理** | 2018-07-01 A |  | 6d → 7d | 0% → 75% |  |  |
| 4 | 1.1.1 立项 | 2018-07-01 A | 2018-07-01 A |  | 0% → 100% | 44d → none |  |
| 5 | 1.1.2 制定项目开发计划 | 2018-07-02 → 2018-07-03 A (+1d) | 2018-07-02 → 2018-07-03 A (+1d) | 0.25d → 1d | 0% → 100% | 44d → none | constraint finish no earlier than 2018-07-02 → start no earlier than 2018-07-03; baseline start 2018-07-02 → 2018-07-03; baseline finish 2018-07-02 → 2018-07-03 |
| 6 | 1.1.3 制定项目进度计划 | 2018-07-02 A | 2018-07-02 A |  | 0% → 100% | 44d → none | resources 徐兆科 → 伍锦彬 |
| 8 | **1.2 配置管理** | 2018-07-02 A | 2018-07-03 A |  | 0% → 100% |  |  |
| 9 | 1.2.1 制定配置计划 | 2018-07-02 A | 2018-07-02 A |  | 0% → 100% | 43d → none |  |
| 10 | 1.2.2 搭建配置环境 | 2018-07-03 A | 2018-07-03 A |  | 0% → 100% | 43d → none |  |
| 11 | **1.3 需求开发** | 2018-07-04 → 2018-07-03 A (-1d) | 2018-07-06 → 2018-07-05 A (-1d) | 3d → 4d | 0% → 100% |  | baseline start 2018-07-01 → 2018-07-03; baseline finish none → 2018-07-05 |
| 12 | 1.3.1 用例建模 | 2018-07-04 → 2018-07-03 A (-1d) | 2018-07-04 A | 1d → 2d | 0% → 100% | 40d → none | constraint start no earlier than 2018-07-04 → start no earlier than 2018-07-03; baseline start 2018-07-04 → 2018-07-03 |
| 13 | 1.3.2 用例阐述 | 2018-07-05 A | 2018-07-06 → 2018-07-05 A (-1d) | 2d → 1d | 0% → 100% | 40d → none | resources 马晓鹏; 伍锦彬 → 马晓鹏; 伍锦彬; 黄鑫辉; baseline finish 2018-07-06 → 2018-07-05 |
| 14 | **1.4 阶段评审** | 2018-07-06 A |  |  | 0% → 52% |  |  |
| 15 | 1.4.1 先启配置状态审计 | 2018-07-06 A |  |  |  | 40d → none |  |
| 16 | 1.4.2 评审需求工件 | 2018-07-06 A | 2018-07-06 A |  | 0% → 100% | 40d → none |  |

## Version 5 (data date 2018-07-19, saved 2018-07-19)

Note of the change: Merge branch 'master' of https://github.com/sevenoccur/hdproject

Last finish stays 2018-08-31. Complete tasks 11 → 13.

Changed:

| ID | Task | Start | Finish | Complete |
| --- | --- | --- | --- | --- |
| 1 | **会员刷卡积分管理系统** |  |  | 46% → 56% |
| 28 | **3 构建阶段** |  |  | 0% → 60% |
| 29 | 3.1 单元编码 |  | 2018-07-16 A | 0% → 100% |
| 30 | 3.2 系统集成 | 2018-07-17 A | 2018-07-17 A | 0% → 100% |

## Version 6 (data date 2018-07-19, saved 2018-07-19)

Note of the change: 甘特图增加前置任务

Last finish stays 2018-08-31.

Changed:

| ID | Task | Start | Finish | Predecessors |
| --- | --- | --- | --- | --- |
| 5 | 1.1.2 制定项目开发计划 |  |  | none → 4 |
| 9 | 1.2.1 制定配置计划 |  |  | none → 5 |
| 12 | 1.3.1 用例建模 |  |  | none → 5 |
| 15 | 1.4.1 先启配置状态审计 |  |  | none → 10 |
| 16 | 1.4.2 评审需求工件 |  |  | none → 13 |
| 18 | **2 精化阶段** | 2018-07-09 A → 2018-07-09 |  |  |
| 19 | 2.1 设计界面原型 | 2018-07-09 → 2018-07-04 (-5d) | 2018-07-09 → 2018-07-05 (-4d) | none → 12 |
| 21 | 2.2.1 分析模型 |  |  | none → 12 |
| 22 | 2.2.2 设计模型 |  |  | none → 12 |
| 23 | 2.3 数据库建模与数据库设计 |  |  | none → 22 |
| 29 | 3.1 单元编码 |  |  | none → 22 |
| 30 | 3.2 系统集成 |  |  | none → 29 |
| 31 | 3.3 集成测试 | 2018-07-18 → 2018-07-17 (-1d) |  | none → 30 |
